How a schedule from MS Project changed from version to version. A marks actual dates.

## Version 1 (saved 2013-10-08)

| ID | WBS | Task | Duration | Start | Finish | Predecessors | Total float | Constraint |
| --- | --- | --- | --- | --- | --- | --- | --- | --- |
| 1 | 1 | **分析设计阶段** | 15d | 2013-07-15 | 2013-08-02 |  |  |  |
| 2 |  | 需求功能点文档 | 7d | 2013-07-15 | 2013-07-23 |  | 0d |  |
| 3 |  | 原型设计(UI) | 4d | 2013-07-24 | 2013-07-29 | 2 | 0d |  |
| 4 |  | 表结构设计 | 4d | 2013-07-30 | 2013-08-02 | 3 | 0d |  |
| 5 | 2 | **美工html页面设计** | 9d | 2013-10-08 | 2013-10-17 |  |  |  |
| 6 |  | 登陆页面设计图 | 1d | 2013-10-08 | 2013-10-08 | 4 | 1d |  |
| 7 |  | 注册页面设计图 | 1d | 2013-10-08 | 2013-10-08 | 4 | 1d |  |
| 8 |  | 首页康讯云计算设计图 | 1d | 2013-10-09 | 2013-10-09 | 6 | 1d |  |
| 9 |  | 云服务产品详情设计图 | 1d | 2013-10-09 | 2013-10-09 | 7 | 1d |  |
| 10 |  | 云服务购买(下单)设计图 | 1d | 2013-10-10 | 2013-10-10 | 8 | 1d |  |
| 11 |  | 云服务试用设计图 | 1d | 2013-10-10 | 2013-10-10 | 9 | 1d |  |
| 12 |  | 管理控制台设计图 | 1d | 2013-10-11 | 2013-10-11 | 10 | 1d |  |
| 13 |  | 虚机详情设计图 | 1d | 2013-10-11 | 2013-10-11 | 11 | 1d |  |
| 14 |  | 确认订单设计图 | 1d | 2013-10-12 | 2013-10-12 | 12 | 1d | start no earlier than 2013-10-12 |
| 15 |  | 我的订单设计图 | 1d | 2013-10-12 | 2013-10-12 | 13 | 1d |  |
| 16 |  | 我的订单详情设计图 | 1d | 2013-10-14 | 2013-10-14 | 14 | 1d |  |
| 17 |  | 我的账户设计图 | 1d | 2013-10-14 | 2013-10-14 | 15 | 1d |  |
| 18 |  | 修改资本资料设计图 | 1d | 2013-10-15 | 2013-10-15 | 16 | 1d |  |
| 19 |  | 修改密码设计图 | 1d | 2013-10-15 | 2013-10-15 | 17 | 1d |  |
| 20 |  | 设置密保问题设计图 | 1d | 2013-10-16 | 2013-10-16 | 18 | 1d |  |
| 21 |  | 云服务使用申请列表设计图 | 1d | 2013-10-16 | 2013-10-16 | 19 | 1d |  |
| 22 | 3 | **编码实现阶段** | 86d | 2013-10-08 | 2014-02-03 |  |  |  |
| 23 | 3.1 | **web前台开发** | 55d | 2013-10-31 | 2014-01-15 |  |  |  |
| 24 |  | 用户权限管理 | 4d | 2013-10-31 | 2013-11-05 | 20 | 68d | start no earlier than 2013-10-31 |
| 25 | 3.1.2 | **用户中心** | 11d | 2013-11-05 | 2013-11-19 |  |  |  |
| 26 |  | 用户注册 | 3d | 2013-11-05 | 2013-11-07 | 21 | 0d | start no earlier than 2013-11-05 |
| 27 |  | 用户登陆 | 2d | 2013-11-08 | 2013-11-11 | 26 | 0d |  |
| 28 |  | 查看个人信息 | 1d | 2013-11-12 | 2013-11-12 | 27 | 0d |  |
| 29 |  | 个人资料修改 | 2d | 2013-11-13 | 2013-11-14 | 28 | 0d |  |
| 30 |  | 密码修改 | 1d | 2013-11-15 | 2013-11-15 | 29 | 0d |  |
| 31 |  | 密码保护问题 | 2d | 2013-11-18 | 2013-11-19 | 30 | 0d |  |
| 32 | 3.1.3 | **订单** | 10d | 2013-11-20 | 2013-12-03 |  | 0d |  |
| 33 |  | 下单 | 3d | 2013-11-20 | 2013-11-22 | 31 | 0d |  |
| 34 |  | 确认订单 | 1d | 2013-11-25 | 2013-11-25 | 33 | 0d |  |
| 35 |  | 提交审核 | 1d | 2013-11-26 | 2013-11-26 | 34 | 0d |  |
| 36 |  | 订单查看 | 1d | 2013-11-27 | 2013-11-27 | 35 | 0d |  |
| 37 |  | 订单详情 | 1d | 2013-11-28 | 2013-11-28 | 36 | 0d | start no earlier than 2013-09-16 |
| 38 |  | 订单作废 | 1d | 2013-11-29 | 2013-11-29 | 37 | 0d |  |
| 39 |  | 升级 | 2d | 2013-12-02 | 2013-12-03 | 38 | 0d |  |
| 40 | 3.1.4 | **首页** | 4d | 2013-12-04 | 2013-12-09 |  |  |  |
| 41 |  | 产品与服务列表 | 2d | 2013-12-04 | 2013-12-05 | 39 | 0d |  |
| 42 |  | 产品介绍 | 2d | 2013-12-06 | 2013-12-09 | 41 | 0d |  |
| 43 | 3.2 | **cms后台管理系统开发** | 50d | 2013-10-08 | 2013-12-13 |  |  |  |
| 44 |  | 用户管理 | 2d | 2013-10-08 | 2013-10-09 |  | 14.5d | start no earlier than 2013-10-08 |
| 45 |  | 权限管理 | 2d | 2013-10-10 | 2013-10-11 | 44 | 14.5d | start no earlier than 2013-09-30 |
| 46 |  | 查看订单 | 1d | 2013-12-10 | 2013-12-10 | 45 | -27.5d | start no earlier than 2013-12-10 |
| 47 |  | 删除订单 | 1d | 2013-12-11 | 2013-12-11 | 46 | -27.5d |  |
| 48 |  | 审核订单 | 1d | 2013-12-12 | 2013-12-12 | 47 | -27.5d |  |
| 49 |  | 租户列表 | 1d | 2013-12-13 | 2013-12-13 | 48 | -27.5d |  |
| 50 |  | 禁用租户 | 1d | 2013-12-16 | 2013-12-16 | 49 | -27.5d | start no earlier than 2013-10-07 |
| 51 |  | 初始化租户密码 | 1d | 2013-12-17 | 2013-12-17 | 50 | -27.5d |  |
| 52 |  | 产品与服务配置管理 | 2d | 2013-12-18 | 2013-12-19 | 51 | -27.5d |  |
| 53 |  | VMM列表 | 1d | 2013-12-20 | 2013-12-20 | 52 | -27.5d |  |
| 54 |  | VMM开机 | 1.5d | 2013-12-23 | 2013-12-24 | 53 | -27.5d |  |
| 55 |  | VMM关机 | 1d | 2013-12-24 | 2013-12-25 | 54 | -27.5d | start no earlier than 2013-11-14 |
| 56 |  | VMM重启 | 1d | 2013-12-25 | 2013-12-26 | 55 | -27.5d |  |
| 57 |  | VMM重装系统 | 2d | 2013-12-26 | 2013-12-30 | 56 | -27.5d |  |
| 58 |  | VMM预装软件 | 2d | 2013-12-30 | 2014-01-01 | 57 | -27.5d |  |
| 59 |  | VMM详细信息查看 | 1d | 2014-01-01 | 2014-01-02 | 58 | -27.5d |  |
| 60 |  | 添加ISO镜像 | 1d | 2014-01-02 | 2014-01-03 | 59 | -27.5d |  |
| 61 |  | 查询ISO镜像 | 1d | 2014-01-03 | 2014-01-06 | 60 | -27.5d |  |
| 62 |  | 删除ISO镜像 | 1d | 2014-01-06 | 2014-01-07 | 61 | -27.5d |  |
| 63 |  | 修改ISO镜像 | 1d | 2014-01-07 | 2014-01-08 | 62 | -27.5d |  |
| 64 |  | 查询虚拟机与租户关系列表 | 1d | 2014-01-08 | 2014-01-09 | 63 | -27.5d |  |
| 65 |  | 修改虚拟机与租户关系 | 1d | 2014-01-09 | 2014-01-10 | 64 | -27.5d |  |
| 66 |  | 删除虚拟机与租户关系 | 1d | 2014-01-10 | 2014-01-13 | 65 | -27.5d |  |
| 67 |  | 虚拟网络交换机列表 | 2d | 2014-01-13 | 2014-01-15 | 66 | -27.5d |  |
| 68 |  | 虚拟机网络交换机详情信息 | 1d | 2014-01-15 | 2014-01-16 | 67 | -27.5d |  |
| 69 |  | 添加域用户 | 1d | 2014-01-16 | 2014-01-17 | 68 | -27.5d |  |
| 70 |  | 域用户列表 | 1d | 2014-01-17 | 2014-01-20 | 69 | -27.5d | start no earlier than 2013-11-18 |

| ID | WBS | Task | Duration | Start | Finish | Predecessors | Total float | Constraint |
| --- | --- | --- | --- | --- | --- | --- | --- | --- |
| 71 |  | 编辑域用户 | 1d | 2014-01-20 | 2014-01-21 | 70 | -27.5d |  |
| 72 |  | 删除域用户 | 1d | 2014-01-21 | 2014-01-22 | 71 | -27.5d |  |
| 73 | 3.3 | **应用服务器开发** | 20d | 2013-10-30 | 2013-11-26 |  |  |  |
| 74 | 3.3.1 | **PowerShell接口开发** | 14d | 2013-10-12 | 2013-10-30 |  |  |  |
| 75 |  | 创建域用户 | 1d | 2013-10-12 | 2013-10-12 |  | 0d | start no earlier than 2013-10-12 |
| 76 |  | 修改域用户 | 1d | 2013-10-12 | 2013-10-12 |  | 0d |  |
| 77 |  | 删除域用户 | 1d | 2013-10-14 | 2013-10-14 | 75 | 0d |  |
| 78 |  | 查询域用户 | 1d | 2013-10-14 | 2013-10-14 | 76 | 0d |  |
| 79 |  | 创建VM | 1d | 2013-10-15 | 2013-10-15 | 77 | 0d |  |
| 80 |  | 修改VM | 1d | 2013-10-15 | 2013-10-15 | 78 | 0d |  |
| 81 |  | 删除VM | 1d | 2013-10-16 | 2013-10-16 | 79 | 0d |  |
| 82 |  | 获取所有VM | 1d | 2013-10-16 | 2013-10-16 | 80 | 0d |  |
| 83 |  | VM开机 | 1d | 2013-10-17 | 2013-10-17 | 81 | 0d |  |
| 84 |  | VM关机 | 1d | 2013-10-17 | 2013-10-17 | 82 | 0d |  |
| 85 |  | VM重启 | 1d | 2013-10-18 | 2013-10-18 | 83 | 0d |  |
| 86 |  | VM重装系统 | 1d | 2013-10-18 | 2013-10-18 | 84 | 0d |  |
| 87 |  | VM预装软件 | 1d | 2013-10-21 | 2013-10-21 | 85 | 0d |  |
| 88 |  | 获取VM的CPU数量 | 1d | 2013-10-21 | 2013-10-21 | 86 | 0d |  |
| 89 |  | 获取VM内存 | 1d | 2013-10-22 | 2013-10-22 | 87 | 0d |  |
| 90 |  | 获取VM进程 | 1d | 2013-10-22 | 2013-10-22 | 88 | 0d |  |
| 91 |  | 获取硬盘大小 | 1d | 2013-10-23 | 2013-10-23 | 89 | 0d |  |
| 92 |  | 删除VM | 1d | 2013-10-23 | 2013-10-23 | 90 | 0d |  |
| 93 |  | 设置VM的CPU个数 | 1d | 2013-10-24 | 2013-10-24 | 91 | 0d |  |
| 94 |  | 设置VM内存 | 1d | 2013-10-24 | 2013-10-24 | 92 | 0d |  |
| 95 |  | 设置硬盘大小 | 1d | 2013-10-25 | 2013-10-25 | 93 | 0d |  |
| 96 |  | 设置虚拟串行端口 | 1d | 2013-10-25 | 2013-10-25 | 94 | 0d |  |
| 97 |  | 设置VM群集设置 | 1d | 2013-10-28 | 2013-10-28 | 95 | 0d |  |
| 98 |  | 获取VM主机名 | 1d | 2013-10-28 | 2013-10-28 | 96 | 0d |  |
| 99 |  | 获取VM摘要 | 1d | 2013-10-29 | 2013-10-29 | 97 | 0d |  |
| 100 |  | 获取VM缩略图 | 1d | 2013-10-29 | 2013-10-29 | 98 | 0d |  |
| 101 |  | 设置VM主机名 | 1d | 2013-10-30 | 2013-10-30 | 99 | 0d |  |
| 102 |  | 设置VM状态 | 1d | 2013-10-30 | 2013-10-30 | 100 | 0d |  |
| 103 | 3.3.2 | **定时任务开发** | 6d | 2014-01-23 | 2014-01-30 |  |  |  |
| 104 |  | 自动扫描已付款订单,创建虚拟机 | 3d | 2014-01-23 | 2014-01-27 | 101 | 3d |  |
| 105 |  | 产品使用到期提醒 | 3d | 2014-01-28 | 2014-01-30 | 102 | 0d | start no earlier than 2014-01-28 |
| 106 | 4 | **集成测试阶段** | 8d | 2014-01-29 | 2014-02-07 |  |  |  |
| 107 |  | 用户下单 | 1d | 2014-01-29 | 2014-01-29 |  | 7d | start no earlier than 2014-01-29 |
| 108 |  | 创建VM | 1d | 2014-01-28 | 2014-01-28 | 104 | 8d | start no earlier than 2013-11-28 |
| 109 |  | 查看VM | 1d | 2014-01-31 | 2014-01-31 | 105 | 0d | start no earlier than 2013-11-29 |
| 110 |  | 修改VM配置信息 | 1d | 2014-02-03 | 2014-02-03 | 109 | 0d |  |
| 111 |  | 重启VM | 1d | 2014-02-04 | 2014-02-04 | 110 | 0d |  |
| 112 |  | VM开机 | 1d | 2014-02-05 | 2014-02-05 | 111 | 0d |  |
| 113 |  | VM重装系统 | 1d | 2014-02-06 | 2014-02-06 | 112 | 0d |  |
| 114 |  | 创建域用户 | 1d | 2014-02-07 | 2014-02-07 | 113 | 0d |  |

## Version 2 (saved 2013-10-21)

Last finish 2014-02-07 → 2014-02-03 (-4d).

Added:

| ID | Task | Duration | Start | Finish |
| --- | --- | --- | --- | --- |
| 22 | 评审页面设计 | 0d | 2013-10-22 | 2013-10-22 |
| 24 | **静态页面开发** | 1d? | 2013-10-08 | 2013-10-08 |
| 25 | 登陆页面设计图 | 1d? | 2013-10-08 | 2013-10-08 |
| 26 | 注册页面设计图 | 1d? | 2013-10-08 | 2013-10-08 |
| 27 | 首页康讯云计算设计图 | 1d? | 2013-10-08 | 2013-10-08 |
| 28 | 云服务产品详情设计图 | 1d? | 2013-10-08 | 2013-10-08 |
| 29 | 云服务购买(下单)设计图 | 1d? | 2013-10-08 | 2013-10-08 |
| 30 | 云服务试用设计图 | 1d? | 2013-10-08 | 2013-10-08 |
| 31 | 管理控制台设计图 | 1d? | 2013-10-08 | 2013-10-08 |
| 32 | 虚机详情设计图 | 1d? | 2013-10-08 | 2013-10-08 |
| 33 | 确认订单设计图 | 1d? | 2013-10-08 | 2013-10-08 |
| 34 | 我的订单设计图 | 1d? | 2013-10-08 | 2013-10-08 |
| 35 | 我的订单详情设计图 | 1d? | 2013-10-08 | 2013-10-08 |
| 36 | 我的账户设计图 | 1d? | 2013-10-08 | 2013-10-08 |
| 37 | 修改资本资料设计图 | 1d? | 2013-10-08 | 2013-10-08 |
| 38 | 修改密码设计图 | 1d? | 2013-10-08 | 2013-10-08 |
| 39 | 设置密保问题设计图 | 1d? | 2013-10-08 | 2013-10-08 |
| 40 | 云服务使用申请列表设计图 | 1d? | 2013-10-08 | 2013-10-08 |

Changed:

| ID | Task | Start | Finish | Total float | Predecessors | Other |
| --- | --- | --- | --- | --- | --- | --- |
| 5 | **美工页面设计** |  |  |  |  | was named 美工html页面设计 |
| 6 | 登陆页面设计图 |  |  |  |  | resources 周文 → 周雯 |
| 7 | 注册页面设计图 |  |  |  |  | resources 周文 → 周雯 |
| 8 | 首页康讯云计算设计图 |  |  |  |  | resources 周文 → 周雯 |
| 9 | 云服务产品详情设计图 |  |  |  |  | resources 周文 → 周雯 |
| 10 | 云服务购买(下单)设计图 |  |  |  |  | resources 周文 → 周雯 |
| 11 | 云服务试用设计图 |  |  |  |  | resources 周文 → 周雯 |
| 12 | 管理控制台设计图 |  |  |  |  | resources 周文 → 周雯 |
| 13 | 虚机详情设计图 |  |  |  |  | resources 周文 → 周雯 |
| 14 | 确认订单设计图 |  |  |  |  | resources 周文 → 周雯 |
| 15 | 我的订单设计图 |  |  |  |  | resources 周文 → 周雯 |
| 16 | 我的订单详情设计图 |  |  |  |  | resources 周文 → 周雯 |
| 17 | 我的账户设计图 |  |  |  |  | resources 周文 → 周雯 |
| 18 | 修改资本资料设计图 |  |  |  |  | resources 周文 → 周雯 |
| 19 | 修改密码设计图 |  |  |  |  | resources 周文 → 周雯 |
| 20 | 设置密保问题设计图 |  |  |  |  | resources 周文 → 周雯 |
| 21 | 云服务使用申请列表设计图 |  |  |  |  | resources 周文 → 周雯 |
| 41 | **web前台开发** | 2013-10-31 → 2013-10-17 (-14d) | 2014-01-15 → 2014-01-01 (-14d) |  |  |  |
| 42 | 用户权限管理 | 2013-10-31 → 2013-10-17 (-14d) | 2013-11-05 → 2013-10-22 (-14d) | 68d → 74d |  | constraint start no earlier than 2013-10-31 → start no earlier than 2013-10-17 |
| 43 | **用户中心** | 2013-11-05 → 2013-10-29 (-7d) | 2013-11-19 → 2013-11-12 (-7d) |  |  |  |
| 44 | 用户注册 | 2013-11-05 → 2013-10-29 (-7d) | 2013-11-07 → 2013-10-31 (-7d) |  |  | constraint start no earlier than 2013-11-05 → start no earlier than 2013-10-29 |
| 45 | 用户登陆 | 2013-11-08 → 2013-11-01 (-7d) | 2013-11-11 → 2013-11-04 (-7d) |  |  |  |
| 46 | 查看个人信息 | 2013-11-12 → 2013-11-05 (-7d) | 2013-11-12 → 2013-11-05 (-7d) |  |  |  |
| 47 | 个人资料修改 | 2013-11-13 → 2013-11-06 (-7d) | 2013-11-14 → 2013-11-07 (-7d) |  |  |  |
| 48 | 密码修改 | 2013-11-15 → 2013-11-08 (-7d) | 2013-11-15 → 2013-11-08 (-7d) |  |  |  |
| 49 | 密码保护问题 | 2013-11-18 → 2013-11-11 (-7d) | 2013-11-19 → 2013-11-12 (-7d) |  |  |  |
| 50 | **订单** | 2013-11-20 → 2013-11-12 (-8d) | 2013-12-03 → 2013-11-25 (-8d) | 0d → none |  |  |
| 51 | 下单 | 2013-11-20 → 2013-11-12 (-8d) | 2013-11-22 → 2013-11-14 (-8d) |  | 49 → none | constraint none → start no earlier than 2013-11-12 |
| 52 | 确认订单 | 2013-11-25 → 2013-11-15 (-10d) | 2013-11-25 → 2013-11-15 (-10d) |  |  |  |
| 53 | 提交审核 | 2013-11-26 → 2013-11-18 (-8d) | 2013-11-26 → 2013-11-18 (-8d) |  |  |  |
| 54 | 订单查看 | 2013-11-27 → 2013-11-19 (-8d) | 2013-11-27 → 2013-11-19 (-8d) |  |  |  |
| 55 | 订单详情 | 2013-11-28 → 2013-11-20 (-8d) | 2013-11-28 → 2013-11-20 (-8d) |  |  |  |
| 56 | 订单作废 | 2013-11-29 → 2013-11-21 (-8d) | 2013-11-29 → 2013-11-21 (-8d) |  |  |  |
| 57 | 升级 | 2013-12-02 → 2013-11-22 (-10d) | 2013-12-03 → 2013-11-25 (-8d) |  |  |  |
| 58 | **首页** | 2013-12-04 → 2013-10-23 (-42d) | 2013-12-09 → 2013-10-28 (-42d) |  |  |  |
| 59 | 产品与服务列表 | 2013-12-04 → 2013-10-23 (-42d) | 2013-12-05 → 2013-10-24 (-42d) |  | 57 → none | constraint none → start no earlier than 2013-10-23 |
| 60 | 产品介绍 | 2013-12-06 → 2013-10-25 (-42d) | 2013-12-09 → 2013-10-28 (-42d) |  |  |  |
| 61 | **cms后台管理系统开发** | 2013-10-08 → 2013-11-26 (+49d) | 2013-12-13 → 2014-02-03 (+52d) |  |  |  |
| 62 | 用户管理 | 2013-10-08 → 2013-11-26 (+49d) | 2013-10-09 → 2013-11-27 (+49d) |  |  | constraint start no earlier than 2013-10-08 → start no earlier than 2013-11-26 |
| 63 | 权限管理 | 2013-10-10 → 2013-11-28 (+49d) | 2013-10-11 → 2013-11-29 (+49d) |  |  |  |
| 64 | 查看订单 | 2013-12-10 → 2013-12-02 (-8d) | 2013-12-10 → 2013-12-02 (-8d) | -27.5d → 14.5d |  | constraint start no earlier than 2013-12-10 → start no earlier than 2013-12-02 |
| 65 | 删除订单 | 2013-12-11 → 2013-12-03 (-8d) | 2013-12-11 → 2013-12-03 (-8d) | -27.5d → 14.5d |  |  |
| 66 | 审核订单 | 2013-12-12 → 2013-12-04 (-8d) | 2013-12-12 → 2013-12-04 (-8d) | -27.5d → 14.5d |  |  |
| 67 | 租户列表 | 2013-12-13 → 2013-12-05 (-8d) | 2013-12-13 → 2013-12-05 (-8d) | -27.5d → 14.5d |  |  |
| 68 | 禁用租户 | 2013-12-16 → 2013-12-06 (-10d) | 2013-12-16 → 2013-12-06 (-10d) | -27.5d → 14.5d |  |  |
| 69 | 初始化租户密码 | 2013-12-17 → 2013-12-09 (-8d) | 2013-12-17 → 2013-12-09 (-8d) | -27.5d → 14.5d |  |  |
| 70 | 产品与服务配置管理 | 2013-12-18 → 2013-12-10 (-8d) | 2013-12-19 → 2013-12-11 (-8d) | -27.5d → 14.5d |  |  |
| 71 | VMM列表 | 2013-12-20 → 2013-12-12 (-8d) | 2013-12-20 → 2013-12-12 (-8d) | -27.5d → 14.5d |  |  |
| 72 | VMM开机 | 2013-12-23 → 2013-12-13 (-10d) | 2013-12-24 → 2013-12-16 (-8d) | -27.5d → 14.5d |  |  |
| 73 | VMM关机 | 2013-12-24 → 2013-12-16 (-8d) | 2013-12-25 → 2013-12-17 (-8d) | -27.5d → 14.5d |  |  |
| 74 | VMM重启 | 2013-12-25 → 2013-12-17 (-8d) | 2013-12-26 → 2013-12-18 (-8d) | -27.5d → 14.5d |  |  |
| 75 | VMM重装系统 | 2013-12-26 → 2013-12-18 (-8d) | 2013-12-30 → 2013-12-20 (-10d) | -27.5d → 14.5d |  |  |
| 76 | VMM预装软件 | 2013-12-30 → 2013-12-20 (-10d) | 2014-01-01 → 2013-12-24 (-8d) | -27.5d → 14.5d |  |  |
| 77 | VMM详细信息查看 | 2014-01-01 → 2013-12-24 (-8d) | 2014-01-02 → 2013-12-25 (-8d) | -27.5d → 14.5d |  |  |
| 78 | 添加ISO镜像 | 2014-01-02 → 2013-12-25 (-8d) | 2014-01-03 → 2013-12-26 (-8d) | -27.5d → 14.5d |  |  |
| 79 | 查询ISO镜像 | 2014-01-03 → 2013-12-26 (-8d) | 2014-01-06 → 2013-12-27 (-10d) | -27.5d → 14.5d |  |  |
| 80 | 删除ISO镜像 | 2014-01-06 → 2013-12-27 (-10d) | 2014-01-07 → 2013-12-30 (-8d) | -27.5d → 14.5d |  |  |
| 81 | 修改ISO镜像 | 2014-01-07 → 2013-12-30 (-8d) | 2014-01-08 → 2013-12-31 (-8d) | -27.5d → 14.5d |  |  |
| 82 | 查询虚拟机与租户关系列表 | 2014-01-08 → 2013-12-31 (-8d) | 2014-01-09 → 2014-01-01 (-8d) | -27.5d → 14.5d |  |  |
| 83 | 修改虚拟机与租户关系 | 2014-01-09 → 2014-01-01 (-8d) | 2014-01-10 → 2014-01-02 (-8d) | -27.5d → 14.5d |  |  |
| 84 | 删除虚拟机与租户关系 | 2014-01-10 → 2014-01-02 (-8d) | 2014-01-13 → 2014-01-03 (-10d) | -27.5d → 14.5d |  |  |
| 85 | 虚拟网络交换机列表 | 2014-01-13 → 2014-01-03 (-10d) | 2014-01-15 → 2014-01-07 (-8d) | -27.5d → 14.5d |  |  |
| 86 | 虚拟机网络交换机详情信息 | 2014-01-15 → 2014-01-07 (-8d) | 2014-01-16 → 2014-01-08 (-8d) | -27.5d → 14.5d |  |  |
| 87 | 添加域用户 | 2014-01-16 → 2014-01-08 (-8d) | 2014-01-17 → 2014-01-09 (-8d) | -27.5d → 14.5d |  |  |
| 88 | 域用户列表 | 2014-01-17 → 2014-01-09 (-8d) | 2014-01-20 → 2014-01-10 (-10d) | -27.5d → 14.5d |  |  |
| 89 | 编辑域用户 | 2014-01-20 → 2014-01-10 (-10d) | 2014-01-21 → 2014-01-13 (-8d) | -27.5d → 14.5d |  |  |
| 90 | 删除域用户 | 2014-01-21 → 2014-01-13 (-8d) | 2014-01-22 → 2014-01-14 (-8d) | -27.5d → 14.5d |  |  |
| 93 | 创建域用户 |  |  |  |  | resources 陈亮; 陈毅文 → 张金华; 陈毅文 |
| 94 | 修改域用户 |  |  |  |  | resources 陈亮; 陈毅文 → 张金华; 陈毅文 |
| 95 | 删除域用户 |  |  |  |  | resources 陈亮; 陈毅文 → 张金华; 陈毅文 |

| ID | Task | Start | Finish | Total float | Other |
| --- | --- | --- | --- | --- | --- |
| 96 | 查询域用户 |  |  |  | resources 陈亮; 陈毅文 → 张金华; 陈毅文 |
| 97 | 创建VM |  |  |  | resources 陈亮; 陈毅文 → 张金华; 陈毅文 |
| 98 | 修改VM |  |  |  | resources 陈亮; 陈毅文 → 张金华; 陈毅文 |
| 99 | 删除VM |  |  |  | resources 陈亮; 陈毅文 → 张金华; 陈毅文 |
| 100 | 获取所有VM |  |  |  | resources 陈亮; 陈毅文 → 张金华; 陈毅文 |
| 101 | VM开机 |  |  |  | resources 陈亮; 陈毅文 → 张金华; 陈毅文 |
| 102 | VM关机 |  |  |  | resources 陈亮; 陈毅文 → 张金华; 陈毅文 |
| 103 | VM重启 |  |  |  | resources 陈亮; 陈毅文 → 张金华; 陈毅文 |
| 104 | VM重装系统 |  |  |  | resources 陈亮; 陈毅文 → 张金华; 陈毅文 |
| 105 | VM预装软件 |  |  |  | resources 陈亮; 陈毅文 → 张金华; 陈毅文 |
| 106 | 获取VM的CPU数量 |  |  |  | resources 陈亮; 陈毅文 → 张金华; 陈毅文 |
| 107 | 获取VM内存 |  |  |  | resources 陈亮; 陈毅文 → 张金华; 陈毅文 |
| 108 | 获取VM进程 |  |  |  | resources 陈亮; 陈毅文 → 张金华; 陈毅文 |
| 109 | 获取硬盘大小 |  |  |  | resources 陈亮; 陈毅文 → 张金华; 陈毅文 |
| 110 | 删除VM |  |  |  | resources 陈亮; 陈毅文 → 张金华; 陈毅文 |
| 111 | 设置VM的CPU个数 |  |  |  | resources 陈亮; 陈毅文 → 张金华; 陈毅文 |
| 112 | 设置VM内存 |  |  |  | resources 陈亮; 陈毅文 → 张金华; 陈毅文 |
| 113 | 设置硬盘大小 |  |  |  | resources 陈亮; 陈毅文 → 张金华; 陈毅文 |
| 114 | 设置虚拟串行端口 |  |  |  | resources 陈亮; 陈毅文 → 张金华; 陈毅文 |
| 115 | 设置VM群集设置 |  |  |  | resources 陈亮; 陈毅文 → 张金华; 陈毅文 |
| 116 | 获取VM主机名 |  |  |  | resources 陈亮; 陈毅文 → 张金华; 陈毅文 |
| 117 | 获取VM摘要 |  |  |  | resources 陈亮; 陈毅文 → 张金华; 陈毅文 |
| 118 | 获取VM缩略图 |  |  |  | resources 陈亮; 陈毅文 → 张金华; 陈毅文 |
| 119 | 设置VM主机名 |  |  |  | resources 陈亮; 陈毅文 → 张金华; 陈毅文 |
| 120 | 设置VM状态 |  |  |  | resources 陈亮; 陈毅文 → 张金华; 陈毅文 |
| 121 | **定时任务开发** | 2014-01-23 → 2014-01-15 (-8d) | 2014-01-30 → 2014-01-22 (-8d) |  |  |
| 122 | 自动扫描已付款订单,创建虚拟机 | 2014-01-23 → 2014-01-15 (-8d) | 2014-01-27 → 2014-01-17 (-10d) |  |  |
| 123 | 产品使用到期提醒 | 2014-01-28 → 2014-01-20 (-8d) | 2014-01-30 → 2014-01-22 (-8d) | 0d → 2d | constraint start no earlier than 2014-01-28 → start no earlier than 2014-01-20 |
| 124 | **集成测试阶段** | 2014-01-29 → 2014-01-23 (-6d) | 2014-02-07 → 2014-02-03 (-4d) |  |  |
| 125 | 用户下单 | 2014-01-29 → 2014-01-23 (-6d) | 2014-01-29 → 2014-01-23 (-6d) |  | constraint start no earlier than 2014-01-29 → start no earlier than 2014-01-23 |
| 126 | 创建VM | 2014-01-28 → 2014-01-24 (-4d) | 2014-01-28 → 2014-01-24 (-4d) | 8d → 6d | constraint start no earlier than 2013-11-28 → start no earlier than 2014-01-24 |
| 127 | 查看VM | 2014-01-31 → 2014-01-27 (-4d) | 2014-01-31 → 2014-01-27 (-4d) |  | constraint start no earlier than 2013-11-29 → start no earlier than 2014-01-27 |
| 128 | 修改VM配置信息 | 2014-02-03 → 2014-01-28 (-6d) | 2014-02-03 → 2014-01-28 (-6d) |  |  |
| 129 | 重启VM | 2014-02-04 → 2014-01-29 (-6d) | 2014-02-04 → 2014-01-29 (-6d) |  |  |
| 130 | VM开机 | 2014-02-05 → 2014-01-30 (-6d) | 2014-02-05 → 2014-01-30 (-6d) |  |  |
| 131 | VM重装系统 | 2014-02-06 → 2014-01-31 (-6d) | 2014-02-06 → 2014-01-31 (-6d) |  |  |
| 132 | 创建域用户 | 2014-02-07 → 2014-02-03 (-4d) | 2014-02-07 → 2014-02-03 (-4d) |  |  |
